# SRIM Phases - Project Plan

Schedule from MS Project, 2015-03-08 to 2015-11-02, A marks actual dates.
SNS

## Calendars

- Standard: Mon-Fri 08:00-12:00, 13:00-17:00; Sat-Sun off. Exceptions (off unless hours are given): 2015-03-08 08:00-12:00, 13:00-17:00, 2015-03-13, 2015-03-22 08:00-12:00, 13:00-17:00, 2015-03-27, 2015-03-29 08:00-12:00, 13:00-17:00, 2015-04-03, 2015-04-10 to 2015-04-19, 2015-04-24, 2015-04-26 08:00-12:00, 13:00-17:00, 2015-05-01, 2015-05-03 08:00-12:00, 13:00-17:00, 2015-05-09 to 2015-05-10 08:00-12:00, 13:00-17:00, 2015-05-15 to 2015-05-17 08:00-12:00, 13:00-17:00, 2015-05-22, 2015-05-24 08:00-12:00, 13:00-17:00, 2015-08-02 08:00-12:00, 13:00-17:00, 2015-08-07, 2015-08-09 08:00-12:00, 13:00-17:00, 2015-08-14 to 2015-08-15, 2015-08-16 08:00-12:00, 13:00-17:00, 2015-08-21 to 2015-08-22, 2015-08-23 08:00-12:00, 13:00-17:00, 2015-09-05 to 2015-09-06 08:00-12:00, 13:00-17:00.

## Resources

| Resource |
| --- |
| SNS Consultant |
| SNS Tech Consultant |
| Project Mgr |

## Schedule

| ID | WBS | Task | Type | Duration | Start | Finish | Predecessors | Complete | Remaining | Baseline start | Baseline finish | Baseline duration | Total slack | Constraint | Resources | Work | Actual work |
| --- | --- | --- | --- | --- | --- | --- | --- | --- | --- | --- | --- | --- | --- | --- | --- | --- | --- |
| 1 | 1 | **SNS - SRIM Project plan phases 1 to 6 V1.4** |  | 172d | 2015-03-08 A | 2015-11-02 |  | 5% | 163.64d | 2003-02-28 | 2003-02-28 | 1d | 0d |  |  | 516h | 76h |
| 2 | 1.1 | **PHASE R1 - Project Initiation** |  | 2d | 2015-03-08 A | 2015-03-09 A |  | 100% |  | 2001-12-03 | 2002-01-07 | 22.5d |  |  |  | 16h | 16h |
| 3 | 1.1.1 | Kick Off Project Meeting |  | 0.5d | 2015-03-08 A | 2015-03-08 A |  | 100% |  | 2001-12-03 | 2001-12-03 | 1d |  | start no earlier than 2015-03-08 | Project Mgr | 4h | 4h |
| 4 | 1.1.2 | Review Current Warehouse Processes |  | 0.5d | 2015-03-08 A | 2015-03-08 A |  | 100% |  | 2007-01-01 | 2007-01-01 | 0d? |  | start no earlier than 2015-03-08 | SNS Consultant | 4h | 4h |
| 5 | 1.1.3 | Educational Training |  | 1d | 2015-03-09 A | 2015-03-09 A |  | 100% |  |  |  |  |  | finish no earlier than 2015-03-09 | SNS Consultant | 8h | 8h |
| 6 | 4 | **PHASE R2 - Business Review Summit - BRS** |  | 17.5d | 2015-03-10 A | 2015-04-02 | 2 | 43% | 10d | 2002-01-15 | 2002-02-06 | 17d | 0d |  |  | 140h | 60h |
| 7 | 1.2.1 | Workshop (Business Review Summit) |  | 2.5d | 2015-03-10 A | 2015-03-12 A |  | 100% |  | 2007-01-01 | 2007-01-01 | 0d? |  | finish no earlier than 2015-03-12 | SNS Consultant | 20h | 20h |
| 8 | 1.2.2 | Business Narrative documentation |  | 5d | 2015-03-16 A | 2015-03-20 A |  | 100% |  | 2007-01-01 | 2007-01-01 | 0d? |  | finish no earlier than 2015-03-20 | SNS Consultant | 40h | 40h |
| 9 | 4.9 | BRS Review and Signoff by customer (client Task) |  | 10d | 2015-03-22 | 2015-04-02 | 8 |  |  | 2002-02-05 | 2002-02-05 | 1d | 0d | finish no earlier than 2015-04-02 |  | 80h |  |
| 10 | 1.3 | **PHASE R3 - Design & Development** |  | 0d | 2015-04-02 | 2015-04-02 |  |  |  | 2001-11-19 | 2001-12-10 | 16d |  |  |  |  |  |
| 11 | 1.3.1 | Environment Setup | milestone, manual | 0d | 2015-04-02 | 2015-04-02 | 9 |  |  | 2001-11-19 | 2001-11-26 | 5.5d |  | start no earlier than 2015-04-02 |  |  |  |
| 12 | 1.3.2 | **Development & Unit Tests** |  | 0d | 2015-04-02 | 2015-04-02 |  |  |  | 2001-11-26 | 2001-12-10 | 11d |  |  |  |  |  |
| 13 | 1.3.2.1 | **Functional Adaptations** |  | 0d | 2015-04-02 | 2015-04-02 | 11 |  |  | 2003-04-08 | 2003-06-03 | 41d |  |  |  |  |  |
| 14 | 1.3.2.1.1 | **Integration Development (Interfaces)** |  | 0d | 2015-04-02 | 2015-04-02 |  |  |  | 2005-12-27 | 2005-12-31 | 4d |  |  |  |  |  |
| 15 | 1.3.2.1.1.1 | Definition & Technical Specification Write up | milestone, manual | 0d | 2015-04-02 | 2015-04-02 |  |  |  | 2005-12-27 | 2005-12-27 | 1d |  | start no earlier than 2015-04-02 |  |  |  |
| 16 | 1.3.2.1.1.2 | Code Development | milestone, manual | 0d | 2015-04-02 | 2015-04-02 |  |  |  | 2005-12-27 | 2005-12-31 | 4d |  | start no earlier than 2015-04-02 |  |  |  |
| 17 | 1.3.2.1.1.3 | Unit Testing | milestone, manual | 0d | 2015-04-02 | 2015-04-02 |  |  |  | 2005-12-27 | 2005-12-27 | 1d |  | start no earlier than 2015-04-02 |  |  |  |
| 18 | 1.3.2.1.2 | **Functional Business Requirement (FBR)** |  | 0d | 2015-04-02 | 2015-04-02 |  |  |  | 2007-01-01 | 2007-01-01 | 1d? |  |  |  |  |  |
| 19 | 1.3.2.1.2.1 | Definition & Technical Specification Write up | milestone, manual | 0d | 2015-04-02 | 2015-04-02 |  |  |  | 2007-01-01 | 2007-01-01 | 1d? |  | start no earlier than 2015-04-02 |  |  |  |
| 20 | 1.3.2.1.2.2 | Code Development | milestone, manual | 0d | 2015-04-02 | 2015-04-02 |  |  |  | 2007-01-01 | 2007-01-01 | 1d? |  | start no earlier than 2015-04-02 |  |  |  |
| 21 | 1.3.2.1.2.3 | Unit Testing | milestone, manual | 0d | 2015-04-02 | 2015-04-02 |  |  |  | 2007-01-01 | 2007-01-01 | 1d? |  | start no earlier than 2015-04-02 |  |  |  |
| 22 | 1.3.2.2 | **Integrated Unit Test** |  | 0d | 2015-04-02 | 2015-04-02 | 17 |  |  | 2003-06-04 | 2003-07-08 | 25d |  |  |  |  |  |
| 23 | 1.3.2.2.1 | Conduct Test | milestone, manual | 0d | 2015-04-02 | 2015-04-02 |  |  |  | 2003-06-04 | 2003-06-24 | 15d |  | start no earlier than 2015-04-02 |  |  |  |
| 24 | 1.3.2.2.2 | Issue Resolution | milestone, manual | 0d | 2015-04-02 | 2015-04-02 | 23 |  |  | 2003-06-04 | 2003-06-10 | 5d |  | start no earlier than 2015-04-02 |  |  |  |
| 25 | 1.3.3 | BOOMI Training (if included) | milestone, manual | 0d | 2015-04-02 | 2015-04-02 |  |  |  | 2006-01-02 | 2006-01-05 | 4d |  | start no earlier than 2015-04-02 |  |  |  |
| 26 | 1.3.4 | Confirm Client Tasks Checklist | milestone, manual | 0d | 2015-04-02 | 2015-04-02 |  |  |  | 2004-11-01 | 2004-11-01 | 1d? |  | start no earlier than 2015-04-02 |  |  |  |

| ID | WBS | Task | Type | Duration | Start | Finish | Predecessors | Baseline start | Baseline finish | Baseline duration | Total slack | Free slack | Constraint | Resources | Work | Text1 |
| --- | --- | --- | --- | --- | --- | --- | --- | --- | --- | --- | --- | --- | --- | --- | --- | --- |
| 27 | 1.4 | **PHASE R4 - Deployment - UAT** |  | 19d | 2015-07-27 | 2015-08-19 | 9 | 2003-03-03 | 2003-08-06 | 113.25d | 11d |  | start no earlier than 2015-07-27 |  | 144h |  |
| 28 | 1.4.1 | Testing and Validating Remote connection | milestone | 0d | 2015-07-27 | 2015-07-27 | 9 |  |  |  | 74d |  | start no earlier than 2015-04-06 |  |  |  |
| 29 | 1.4.2 | Confirm Completion of UAT Checklist | milestone | 0d | 2015-07-27 | 2015-07-27 | 9 | 2007-01-01 | 2007-01-01 | 1d? | 11d | 0d |  |  |  |  |
| 30 | 1.4.3 | **Application Software Installation and Configuration** |  | 2d | 2015-07-27 | 2015-07-28 | 29 | 2003-07-08 | 2003-07-15 | 5d | 11d |  |  |  | 16h |  |
| 31 | 1.4.3.1 | Installation and Configuration of Infor 10 SCE |  | 2d | 2015-07-27 | 2015-07-28 | 29 |  |  |  | 11d | 0d | start no earlier than 2015-04-06 |  | 16h |  |
| 32 | 1.4.4 | **User Acceptance Test** |  | 17d | 2015-07-29 | 2015-08-19 | 31 | 2003-07-15 | 2003-08-04 | 15d | 10d |  |  |  | 128h |  |
| 33 | 1.4.4.1 | **User Acceptance Test Preparation** |  | 2d | 2015-07-29 | 2015-07-30 | 31 | 2003-07-15 | 2003-07-17 | 2d | 11d | 1d |  |  | 16h |  |
| 34 | 1.4.4.1.1 | Load and Verify Master Data |  | 2d | 2015-07-29 | 2015-07-30 | 31 | 2003-07-15 | 2003-07-16 | 1d | 11d |  | finish no earlier than 2015-04-03 | SNS Consultant | 16h | QVC/EXE |
| 35 | 1.4.4.2 | **Trained Trainers and End-Users** |  | 14d | 2015-08-02 | 2015-08-19 | 33 | 2003-07-17 | 2003-08-04 | 13d | 10d |  |  |  | 112h |  |
| 36 | 1.4.4.2.1 | **Train-the-Trainer** |  | 4d | 2015-08-02 | 2015-08-05 | 33 | 2003-07-17 | 2003-07-22 | 3d | 10d |  | start no earlier than 2015-08-01 |  | 32h |  |
| 37 | 1.4.4.2.1.1 | Train Application Specialist Trainers (Super Users) |  | 4d | 2015-08-02 | 2015-08-05 | 33 | 2003-07-17 | 2003-07-22 | 3d | 10d | 0d | start no earlier than 2015-08-02 | SNS Consultant | 32h | EXE/QVC |
| 38 | 1.4.4.2.2 | **User Acceptance Testing** |  | 4d | 2015-08-06 | 2015-08-11 | 37 |  |  |  | 10d |  |  |  | 32h |  |
| 39 | 1.4.4.2.2.1 | User Acceptance Testing |  | 4d | 2015-08-06 | 2015-08-11 | 37 |  |  |  | 10d | 0d |  |  | 32h |  |
| 40 | 1.4.4.2.3 | **End User and Support Training** |  | 6d | 2015-08-12 | 2015-08-19 | 39 | 2003-07-22 | 2003-08-04 | 10d | 10d |  |  |  | 48h |  |
| 41 | 1.4.4.2.3.1 | Train End-Users (Client Task) |  | 6d | 2015-08-12 | 2015-08-19 | 39 | 2003-07-22 | 2003-08-04 | 10d | 10d | 0d |  | SNS Consultant | 48h | QVC |
| 42 | 1.4.5 | **Review and Approval** |  | 0d | 2015-08-19 | 2015-08-19 | 41 | 2003-07-28 | 2003-07-28 | 1.5d | 10d |  |  |  |  |  |
| 43 | 1.4.5.1 | Phase Sign Off and Preparing Warehouse Closure (Client Task) | milestone | 0d | 2015-08-19 | 2015-08-19 | 41 | 2003-07-28 | 2003-07-28 | 0.5d | 10d | 0d |  | SNS Consultant |  | QVC/EXE |
| 44 | 1.5 | **PHASE R5 - Go-Live** |  | 24d | 2015-08-20 | 2015-09-18 | 43 | 2003-08-06 | 2003-09-16 | 29.5d | 10d |  |  |  | 128h |  |
| 45 | 1.5.1 | Confirm Completion of Go-Live Checklist |  | 1d | 2015-08-20 | 2015-08-20 | 43 |  |  |  | 10d | 9d | start no earlier than 2015-05-10 |  | 8h |  |
| 46 | 1.5.2 | **Production Cutover** |  | 7d | 2015-09-03 | 2015-09-09 | 45 | 2003-08-06 | 2003-08-14 | 6d | 1d |  | start no earlier than 2015-09-03 |  | 64h |  |
| 47 | 1.5.2.1 | Cleanup and Backup Production Environment |  | 2d | 2015-09-03 | 2015-09-04 | 45 | 2003-08-06 | 2003-08-07 | 0.5d | 43d |  | start no earlier than 2015-09-03 |  | 16h | EXE/QVC |
| 48 | 1.5.2.2 | Physical Stock Count (Client Task) |  | 5d | 2015-09-04 | 2015-09-08 |  | 2005-02-19 | 2005-02-19 | 1d? | 0d |  | start no earlier than 2015-09-04 | SNS Consultant | 40h |  |
| 49 | 1.5.2.3 | Verify Data in Production Environment |  | 1d | 2015-09-09 | 2015-09-09 | 48 | 2003-08-11 | 2003-08-14 | 3d | 0d |  |  | SNS Consultant | 8h | QVC |
| 50 | 1.5.3 | **Go-Live** |  | 1d | 2015-09-09 | 2015-09-10 | 49 | 2003-08-06 | 2003-08-20 | 10d | 0d |  |  |  | 8h |  |
| 51 | 1.5.3.1 | Determine Go or No-Go (Review Physical Stock Count) | milestone | 0d | 2015-09-09 | 2015-09-09 | 49 | 2003-08-18 | 2003-08-18 | 0d | 38d |  |  |  |  | QVC/EXE |
| 52 | 1.5.3.2 | Execute GO-LIVE |  | 1d | 2015-09-10 | 2015-09-10 | 49 | 2003-08-18 | 2003-08-18 | 0.5d | 0d |  |  | SNS Consultant | 8h | QVC/KNAPP/EXE |

| ID | WBS | Task | Type | Duration | Start | Finish | Predecessors | Baseline start | Baseline finish | Baseline duration | Total slack | Constraint | Resources | Work | Text1 |
| --- | --- | --- | --- | --- | --- | --- | --- | --- | --- | --- | --- | --- | --- | --- | --- |
| 53 | 1.5.4 | **Post Go-Live Support** |  | 6d | 2015-09-11 | 2015-09-18 | 52 | 2003-08-18 | 2003-09-12 | 20d | 0d |  |  | 48h |  |
| 54 | 1.5.4.1 | Provide Go Live On-Site Support |  | 6d | 2015-09-11 | 2015-09-18 | 52 | 2003-08-18 | 2003-09-12 | 20d | 0d |  | SNS Consultant | 48h | QVC/EXE |
| 55 | 1.5.4.2 | Phase Sign Off | milestone | 0d | 2015-09-18 | 2015-09-18 | 54 | 2005-02-19 | 2005-02-19 | 1d? | 0d |  | SNS Consultant |  |  |
| 56 | 1.6 | **PHASE R6 - Project Closure and Support Transition** |  | 1d | 2015-11-02 | 2015-11-02 | 55FS+30d | 2001-07-30 | 2001-07-30 | 1d | 0d |  |  | 8h |  |
| 57 | 1.6.1 | **Customer Support Transition** |  | 1d | 2015-11-02 | 2015-11-02 |  | 2003-09-01 | 2003-09-05 | 4.75d | 0d |  |  | 8h |  |
| 58 | 1.6.1.1 | Conduct Support Transition Meeting with Customer |  | 1d | 2015-11-02 | 2015-11-02 |  | 2003-09-04 | 2003-09-05 | 1d | 0d | start no earlier than 2015-06-22 | SNS Consultant | 8h | EXE/QVC |
| 59 | 1.7 | Project Management |  | 141d | 2015-03-08 | 2015-09-18 |  | 2005-12-11 | 2005-12-11 | 1d? | 31d | finish no earlier than 2015-09-18 | Project Mgr [7.1%] | 80h |  |

Notes:
- 56: PM time is built into specific task in phase 8
