# SIM Phases - Project Plan

Schedule from MS Project, 2017-06-05 to 2018-01-30.
SNS

## Calendars

- Standard: Mon-Fri 08:00-12:00, 13:00-17:00; Sat-Sun off. Exceptions (off unless hours are given): 2015-12-25 to 2024-12-25 (Christmas, recurring), 2016-01-01 to 2025-01-01 (New Year, recurring), 2016-05-01 to 2025-05-01 (Labor Day, recurring).
- Mondays Only: Mon 08:00-12:00, 13:00-17:00; Tue-Sun off.
- Fridays Only: Mon-Thu off; Fri 08:00-12:00, 13:00-17:00; Sat-Sun off.

## Resources

| Resource |
| --- |
| SNS Tech Consultant |
| SNS PM |
| SNS Admin |
| SNS OPs Consultant |
| SNS Technical Manager |

## Schedule

| ID | WBS | Task | Type | Duration | Start | Finish | Predecessors | Baseline start | Baseline finish | Baseline duration | Total slack | Free slack | Constraint | Calendar | Resources | Work |
| --- | --- | --- | --- | --- | --- | --- | --- | --- | --- | --- | --- | --- | --- | --- | --- | --- |
| 1 | 1 | **Infor SCE - Amtek Project Plan** |  | 170d | 2017-06-05 | 2018-01-30 |  | 2003-02-28 | 2003-02-28 | 0d | 0d |  |  |  |  | 1396h |
| 2 | 1.1 | **Pre-Project Phase** |  | 2.12d | 2017-06-05 | 2017-06-07 |  |  |  |  | 3.38d |  |  |  |  | 20h |
| 3 | 1.1.1 | Local Environment Installation |  | 1d | 2017-06-05 | 2017-06-05 |  |  |  |  | 3.38d | 0d | start no earlier than 2017-06-05 |  | SNS Admin | 8h |
| 4 | 1.1.2 | Internal Project Kick-Off |  | 2h | 2017-06-06 | 2017-06-06 | 3 |  |  |  | 3.38d | 0d |  |  | SNS PM; SNS OPs Consultant; SNS Technical Manager | 6h |
| 5 | 1.1.3 | Training Course Preparation |  | 7h | 2017-06-06 | 2017-06-07 | 4 | 2003-05-20 | 2003-05-21 | 2d | 3.38d | 2.88d | start no earlier than 2007-06-12 |  | SNS OPs Consultant | 6h |
| 6 | 1.2 | **PHASE I Project Initiation** |  | 0.5d | 2017-06-12 | 2017-06-12 |  | 2001-12-03 | 2002-01-07 | 22.5d | 0.5d | 0d |  |  |  | 8h |
| 7 | 1.2.1 | Kick Off Project Meeting |  | 0.5d | 2017-06-12 | 2017-06-12 | 5 | 2001-12-03 | 2001-12-03 | 1d | 0.5d |  | start no earlier than 2015-10-01 | Mondays Only | SNS OPs Consultant; SNS PM | 8h |
| 8 | 1.3 | **PHASE II Information Gathering** |  | 1d | 2017-06-12 | 2017-06-13 | 6 | 2007-05-02 | 2007-05-02 | 0d? | 0.5d | 0d |  |  |  | 16h |
| 9 | 1.3.1 | Document Current Warehouse Processes |  | 0.5d | 2017-06-12 | 2017-06-12 |  | 2007-05-02 | 2007-05-02 | 0d? | 0.5d | 0d | start no earlier than 2007-05-02 |  | SNS OPs Consultant; SNS PM | 8h |
| 10 | 1.3.2 | Define Master Data Requirements and Sample Data |  | 0.5d | 2017-06-13 | 2017-06-13 | 9 | 2007-05-02 | 2007-05-02 | 0d? | 0.5d |  | start no earlier than 2006-01-01 |  | SNS OPs Consultant; SNS PM | 8h |
| 11 | 1.4 | **PHASE III Education** |  | 3d | 2017-06-13 | 2017-06-16 | 8 | 2002-01-07 | 2002-01-14 | 5d | 0.5d |  |  |  |  | 24h |
| 12 | 1.4.1 | Conduct Training Course |  | 3d | 2017-06-13 | 2017-06-16 |  | 2002-01-07 | 2002-01-14 | 5d | 0.5d |  | start no earlier than 2007-06-12 |  | SNS OPs Consultant | 24h |
| 13 | 4 | **PHASE IV Business Review Summit** |  | 35d | 2017-06-19 | 2017-08-04 | 11 | 2002-01-15 | 2002-02-06 | 17d | 0d |  |  |  |  | 172h |
| 14 | 1.5.1 | BRS Meetings |  | 2d | 2017-06-19 | 2017-06-26 |  |  |  |  | 0d |  |  | Mondays Only | SNS OPs Consultant; SNS PM | 32h |
| 15 | 4.2 | BRS Meetings Integration |  | 1.5d | 2017-06-27 | 2017-06-28 | 14 | 2002-01-16 | 2002-01-18 | 3d | 3.75d | 0d | start no earlier than 2007-06-17 |  | SNS OPs Consultant; SNS PM | 24h |
| 16 | 4.4 | SOP documentation |  | 5d | 2017-06-28 | 2017-07-05 | 15 | 2002-01-28 | 2002-01-30 | 3d | 3.75d | 0d | start no earlier than 2000-11-14 |  | SNS OPs Consultant | 40h |
| 17 | 1.5.4 | SOP Review and Approval |  | 5d | 2017-06-28 | 2017-07-05 | 16FF |  |  |  | 3.75d | 0d |  |  | SNS PM [20%] | 8h |
| 18 | 1.5.5 | Integration Sheet Documentation |  | 3d | 2017-07-05 | 2017-07-10 | 17 |  |  |  | 3.75d | 0d |  |  | SNS OPs Consultant | 24h |
| 19 | 1.5.6 | Integration Sheet Review and Approval |  | 5d | 2017-07-03 | 2017-07-10 | 18FF |  |  |  | 3.75d | 0d |  |  | SNS PM [20%] | 8h |
| 20 | 1.5.7 | Documents Update |  | 2d | 2017-07-10 | 2017-07-12 | 19 |  |  |  | 3.75d | 0d |  |  | SNS OPs Consultant | 16h |
| 21 | 1.5.8 | Complete FBR/ BRS Proposal estimates and documentation |  | 1d | 2017-07-12 | 2017-07-13 | 20 | 2002-01-29 | 2002-01-30 | 1d | 3.75d | 0d | start no earlier than 2006-01-01 |  | SNS OPs Consultant [50%] | 4h |
| 22 | 1.5.9 | Review SOP Document with Client |  | 0.5d | 2017-07-20 | 2017-07-20 | 21FS+5d | 2007-06-17 | 2007-06-17 | 0d? | 3.75d | 0d |  |  | SNS OPs Consultant; SNS PM | 8h |
| 23 | 1.5.10 | Update Documentation after Review with Client |  | 1d | 2017-07-21 | 2017-07-21 | 22 |  |  |  | 3.75d | 0d |  |  | SNS OPs Consultant | 8h |
| 24 | 4.9 | SOP, FBR, Integration Sheet Review and Signoff by customer (client Task) | milestone | 10d | 2017-07-24 | 2017-08-04 | 23 | 2002-02-05 | 2002-02-05 | 1d | 3.75d | 0d | start no earlier than 2007-07-12 |  |  |  |

Notes:
- 12: Customer conducts a Presentation on EXceed to evaluate to level of aknowledgement of the customer

| ID | WBS | Task | Type | Duration | Start | Finish | Predecessors | Baseline start | Baseline finish | Baseline duration | Total slack | Free slack | Constraint | Calendar | Resources | Work | Text1 |
| --- | --- | --- | --- | --- | --- | --- | --- | --- | --- | --- | --- | --- | --- | --- | --- | --- | --- |
| 25 | 1.6 | **PHASE V - Design & Development** |  | 33.25d | 2017-08-07 | 2017-09-21 | 24 | 2001-11-19 | 2001-12-10 | 16d | 3.75d | 0d |  |  |  | 360h |  |
| 26 | 1.6.1 | Internal Project Kick-Off with Tech |  | 0.25d | 2017-08-07 | 2017-08-07 |  |  |  |  | 3.75d | 0d |  |  | SNS PM; SNS OPs Consultant; SNS Technical Manager; SNS Tech Consultant | 8h |  |
| 27 | 1.6.2 | Environment Setup |  | 1d | 2017-08-07 | 2017-08-08 | 26 | 2007-07-12 | 2007-07-12 | 0d? | 3.75d | 0d | start no earlier than 2007-01-01 |  | SNS Tech Consultant | 8h |  |
| 28 | 1.6.3 | **Integration with Infor Xpert** |  | 32d | 2017-08-08 | 2017-09-21 |  | 2003-04-08 | 2003-06-03 | 41d | 3.75d |  |  |  |  | 256h |  |
| 29 | 1.6.3.1 | Design, Documentation and Development of interfaces |  | 32d | 2017-08-08 | 2017-09-21 | 27 | 2003-04-08 | 2003-05-05 | 20d | 3.75d |  |  |  |  | 256h |  |
| 30 | 1.6.4 | **WMS Modules** |  | 4d | 2017-08-07 | 2017-08-10 |  | 2007-07-12 | 2007-07-12 | 1d? | 33d |  |  |  |  | 88h |  |
| 31 | 1.6.4.1 | Customizations Documentation and Development |  | 4d | 2017-08-07 | 2017-08-10 | 24 | 2007-07-12 | 2007-07-12 | 1d? | 33d |  |  |  | SNS OPs Consultant; SNS Tech Consultant | 64h |  |
| 32 | 1.6.4.2 | Development of Loftware Labels |  | 1d | 2017-08-07 | 2017-08-07 |  |  |  |  | 36d |  |  |  |  | 24h |  |
| 33 | 1.7 | **PHASE VI - Deployment - UAT** |  | 75.75d | 2017-08-01 | 2017-11-14 |  | 2003-03-03 | 2003-08-06 | 113.25d | 36.75d |  |  |  |  | 328h |  |
| 34 | 1.7.1 | Acquire Servers (Client Task) | milestone | 0d | 2017-08-01 | 2017-08-01 | 4FS+8w |  |  |  | 36.75d | 0d |  |  |  |  |  |
| 35 | 1.7.2 | Testing and Validating Remote connection | milestone | 0d | 2017-08-01 | 2017-08-01 | 34 | 2007-07-26 | 2007-07-26 | 1d? | 128.75d | 0d | start no earlier than 2007-07-26 |  | SNS Admin |  |  |
| 36 | 1.7.3 | Confirm Completion of UAT Checklist | milestone | 0d | 2017-08-01 | 2017-08-01 | 35 | 2007-08-13 | 2007-08-13 | 1d? | 128.75d |  | start no earlier than 2007-08-13 |  | SNS PM |  |  |
| 37 | 1.7.4 | **Production, Testing and Training Environments** |  | 4d | 2017-08-01 | 2017-08-07 | 34 | 2003-03-10 | 2003-07-15 | 92d | 36.75d |  |  |  |  | 32h |  |
| 38 | 1.7.4.1 | **Production Hardware, OS, and DBMS Installation and Configuration** |  | 0d | 2017-08-01 | 2017-08-01 |  | 2003-03-10 | 2003-03-19 | 8d | 36.75d | 0d |  |  |  |  |  |
| 39 | 1.7.4.1.1 | Install and Configure Servers (Client Task) | milestone | 0d | 2017-08-01 | 2017-08-01 | 34 | 2003-03-10 | 2003-03-11 | 2d | 36.75d |  | start no earlier than 2007-08-05 |  |  |  | EXE |
| 40 | 1.7.4.2 | **Application Software Installation and Configuration** |  | 4d | 2017-08-01 | 2017-08-07 | 38 | 2007-08-13 | 2007-08-13 | 0d? | 36.75d | 33d |  |  |  | 32h |  |
| 41 | 1.7.4.2.1 | Install and Configure Server Applications, Database and RF |  | 4d | 2017-08-01 | 2017-08-07 |  | 2007-08-13 | 2007-08-13 | 0d? | 36.75d |  |  |  | SNS Admin | 32h |  |
| 42 | 1.7.5 | **User Acceptance Test** |  | 38.75d | 2017-09-21 | 2017-11-14 | 40 | 2003-07-15 | 2003-08-04 | 15d | 3.75d |  |  |  |  | 296h |  |
| 43 | 1.7.5.1 | Deployment of Customized version |  | 1d | 2017-09-21 | 2017-09-22 | 25 |  |  |  | 3.75d | 0d |  |  | SNS Tech Consultant | 8h |  |
| 44 | 1.7.5.2 | **User Acceptance Test Preparation** |  | 2d | 2017-09-22 | 2017-09-26 | 43 | 2003-07-15 | 2003-07-17 | 2d | 3.75d |  |  |  |  | 16h |  |
| 45 | 1.7.5.2.1 | Load and Verify Master Data |  | 2d | 2017-09-22 | 2017-09-26 | 40 | 2003-07-15 | 2003-07-16 | 1d | 3.75d |  | start no earlier than 2006-01-01 |  | SNS OPs Consultant | 16h | QVC/EXE |
| 46 | 1.7.5.3 | **Trained Trainers and End-Users** |  | 32d | 2017-10-02 | 2017-11-14 | 44 | 2003-07-17 | 2003-08-04 | 13d | 0d |  |  |  |  | 272h |  |
| 47 | 1.7.5.3.1 | **Train-the-Trainer** |  | 21d | 2017-10-02 | 2017-10-30 |  | 2003-07-17 | 2003-07-22 | 3d | 0d |  |  |  |  | 232h |  |
| 48 | 1.7.5.3.1.1 | Train Application Specialist Trainers (Day 1) |  | 1d | 2017-10-02 | 2017-10-02 |  |  |  |  | 0d |  |  | Mondays Only | SNS OPs Consultant | 8h |  |
| 49 | 1.7.5.3.1.2 | Train Application Specialist Trainers |  | 4d | 2017-10-03 | 2017-10-06 | 48 | 2003-07-17 | 2003-07-22 | 3d | 0.5d | 0d | start no earlier than 2002-01-21 |  | SNS OPs Consultant | 32h | EXE/QVC |
| 50 | 1.7.5.3.1.3 | Train IT On DB Model and Reports |  | 3d | 2017-10-09 | 2017-10-11 | 49 |  |  |  | 66d |  |  |  | SNS Tech Consultant | 24h |  |
| 51 | 1.7.5.3.1.4 | UAT Testing including Integration |  | 10d | 2017-10-09 | 2017-10-20 | 49 | 2007-08-13 | 2007-08-13 | 0d? | 0.5d | 0d |  |  | SNS Tech Consultant [50%]; SNS OPs Consultant | 120h |  |
| 52 | 1.7.5.3.1.5 | Fixes, changes, updates |  | 6d | 2017-10-23 | 2017-10-30 | 51 |  |  |  | 53d | 0d |  |  | SNS Tech Consultant | 48h |  |

Notes:
- 39: Assumes that Server hardware has been ordered and is delivered in sufficient time

| ID | WBS | Task | Type | Duration | Start | Finish | Predecessors | Baseline start | Baseline finish | Baseline duration | Total slack | Free slack | Constraint | Calendar | Resources | Work | Text1 |
| --- | --- | --- | --- | --- | --- | --- | --- | --- | --- | --- | --- | --- | --- | --- | --- | --- | --- |
| 53 | 1.7.5.3.2 | **End User and Support Training** |  | 11d | 2017-10-31 | 2017-11-14 | 47 | 2003-07-22 | 2003-08-04 | 10d | 53d |  |  |  |  | 40h |  |
| 54 | 1.7.5.3.2.1 | Train End-Users (SNS Support) |  | 5d | 2017-10-31 | 2017-11-06 | 52 | 2003-07-22 | 2003-08-04 | 10d | 53d | 0d | start no earlier than 2002-01-28 |  | SNS OPs Consultant | 40h | QVC |
| 55 | 1.7.5.3.2.2 | Train End-Users (Client Task) |  | 6d | 2017-11-07 | 2017-11-14 | 54 |  |  |  | 53d |  |  |  |  |  |  |
| 56 | 1.7.5.3.3 | **Operational Test Run** |  | 10d | 2017-10-23 | 2017-11-03 |  | 2003-07-28 | 2003-07-28 | 4d | 0.5d |  |  |  |  |  |  |
| 57 | 1.7.5.3.3.1 | Multi-Function Test - Operational Dry Run (Client Task) |  | 10d | 2017-10-23 | 2017-11-03 | 51 | 2003-07-28 | 2003-07-28 | 2d | 0.5d | 0d |  |  |  |  |  |
| 58 | 1.7.6 | **Review and Approval** |  | 0d | 2017-11-03 | 2017-11-03 |  | 2003-07-28 | 2003-07-28 | 0d | 0.5d |  |  |  |  |  |  |
| 59 | 1.7.6.1 | Phase Sign Off and Preparing Warehouse Closure (Client Task) | milestone | 0d | 2017-11-03 | 2017-11-03 | 57 | 2003-07-28 | 2003-07-28 | 0d | 0.5d | 0d | start no earlier than 2007-09-12 |  | SNS OPs Consultant |  | QVC/EXE |
| 60 | 1.8 | **PHASE VII - Go-Live** |  | 28d | 2017-11-06 | 2017-12-13 |  | 2003-08-06 | 2003-09-16 | 29.5d | 0.5d |  |  |  |  | 240h |  |
| 61 | 1.8.1 | Confirm Completion of Go-Live Checklist |  | 1d | 2017-11-06 | 2017-11-06 | 59 |  |  |  | 0.5d | 0d |  |  |  |  |  |
| 62 | 1.8.2 | **Production Cutover** |  | 7d | 2017-11-07 | 2017-11-15 | 61 | 2003-08-06 | 2003-08-14 | 6d | 0d |  |  |  |  | 80h |  |
| 63 | 1.8.2.1 | Deployment of Live Servers |  | 2d | 2017-11-07 | 2017-11-08 |  |  |  |  | 0.5d | 0d |  |  | SNS Tech Consultant | 16h |  |
| 64 | 1.8.2.2 | Cleanup and Backup Production Environment |  | 0.5d | 2017-11-09 | 2017-11-09 | 63 | 2003-08-06 | 2003-08-07 | 0.5d | 0.5d |  | start no earlier than 2007-09-15 |  | SNS Tech Consultant; SNS OPs Consultant | 8h | EXE/QVC |
| 65 | 1.8.2.3 | Physica Stock Count (Client Task) - Day 1 |  | 1d | 2017-11-10 | 2017-11-10 | 64 |  |  |  | 0d |  |  | Fridays Only | SNS Tech Consultant; SNS OPs Consultant | 8h |  |
| 66 | 1.8.2.4 | Physica Stock Count & Reconciliation (Client Task) |  | 3d | 2017-11-13 | 2017-11-15 | 65 |  |  |  | 0d |  |  |  | SNS Tech Consultant; SNS OPs Consultant | 48h |  |
| 67 | 1.8.2.5 | Verify Data in Production Environment | milestone | 0d | 2017-11-15 | 2017-11-15 | 66 |  |  |  | 0d |  |  |  | SNS Tech Consultant |  |  |
| 68 | 1.8.3 | **Go-Live** |  | 0d | 2017-11-15 | 2017-11-15 | 67 | 2003-08-06 | 2003-08-20 | 10d | 0d |  |  |  |  |  |  |
| 69 | 1.8.3.1 | Determine Go or No-Go (Review Physical Stock Count) | milestone | 0d | 2017-11-15 | 2017-11-15 |  | 2003-08-18 | 2003-08-18 | 0d | 0d |  | start no earlier than 2002-05-22 |  | SNS OPs Consultant |  | QVC/EXE |
| 70 | 1.8.3.2 | Execute GO-LIVE | milestone | 0d | 2017-11-15 | 2017-11-15 | 69 | 2003-08-18 | 2003-08-18 | 0d | 0d |  | start no earlier than 2006-01-01 |  | SNS Tech Consultant |  | QVC/KNAPP/EXE |
| 71 | 1.8.4 | **Post Go-Live Support** |  | 20d | 2017-11-16 | 2017-12-13 | 70 | 2003-08-18 | 2003-09-12 | 20d | 0d |  |  |  |  | 160h |  |
| 72 | 1.8.4.1 | Provide Go Live On-Site Support |  | 7d | 2017-11-16 | 2017-11-24 |  | 2003-08-18 | 2003-09-12 | 20d | 0d |  | start no earlier than 2002-05-22 |  | SNS Tech Consultant; SNS OPs Consultant | 112h | QVC/EXE |
| 73 | 1.8.4.2 | Provide Go Live Remote Support |  | 3d | 2017-11-27 | 2017-11-29 | 72 |  |  |  | 0d |  |  |  | SNS OPs Consultant; SNS Tech Consultant | 48h |  |
| 74 | 1.8.4.3 | Phase Sign Off | milestone | 0d | 2017-12-13 | 2017-12-13 | 73FS+2w | 2005-02-19 | 2005-02-19 | 1d? | 16d | 0d |  |  | SNS OPs Consultant |  |  |
| 75 | 1.9 | **PHASE VIII: Project Closure and Support Transition** |  | 1d | 2018-01-08 | 2018-01-08 |  | 2001-07-30 | 2001-07-30 | 1d | 16d |  |  |  |  | 8h |  |
| 76 | 1.9.1 | **Customer Support Transition** |  | 1d | 2018-01-08 | 2018-01-08 |  | 2003-09-01 | 2003-09-05 | 4.75d | 16d |  |  |  |  | 8h |  |
| 77 | 1.9.1.1 | Conduct Support Transition Meeting with Customer |  | 1d | 2018-01-08 | 2018-01-08 | 74FS+3w | 2003-09-04 | 2003-09-05 | 1d | 16d |  | start no earlier than 2006-01-01 |  | SNS OPs Consultant | 8h | EXE/QVC |

Notes:
- 75: PM time is built into specific task in phase 8

| ID | WBS | Task | Duration | Start | Finish | Predecessors | Baseline start | Baseline finish | Baseline duration | Total slack | Constraint | Resources | Work |
| --- | --- | --- | --- | --- | --- | --- | --- | --- | --- | --- | --- | --- | --- |
| 78 | 1.10 | **PHASE IX: Post Implementation Assessment** | 2d | 2018-01-29 | 2018-01-30 |  |  |  |  | 0d |  |  | 16h |
| 79 | 1.10.1 | Post Assessment on-site visit | 1d | 2018-01-29 | 2018-01-29 | 73FS+2mo |  |  |  | 0d |  |  | 8h |
| 80 | 1.10.2 | Post Assessment Report | 1d | 2018-01-30 | 2018-01-30 | 79 |  |  |  | 0d |  |  | 8h |
| 81 | 1.11 | **Admin Tasks** | 0.5d | 2017-06-06 | 2017-06-06 |  |  |  |  | 168.25d |  |  | 4h |
| 82 | 1.11.1 | Confirm Hardware sizing / requirements | 0.5d | 2017-06-06 | 2017-06-06 | 4 | 2007-05-02 | 2007-05-02 | 0d? | 168.25d | start no earlier than 2006-01-01 | SNS Admin | 4h |
| 83 | 1.12 | Project Management | 156.27d | 2017-06-06 | 2018-01-24 | 4 | 2007-05-24 | 2007-05-24 | 1d? | 4.48d | start no earlier than 2013-03-15 | SNS PM [16%] | 200h |
